# Bai3

Schedule from MS Project, 2022-08-01 to 2022-11-21, costs in ₫, A marks actual dates.

## Calendars

- Standard: Mon-Fri 08:00-12:00, 13:00-17:00; Sat-Sun off.

## Resources

| Resource | Rate |
| --- | --- |
| Hà Duyên Thắng | 100000 |
| Đặng Trần Hữu Luân | 100000 |
| Phùng Minh Khánh | 80000 |
| Phạm Hữu Phúc | 120000 |
| Tiền điện | 1000000 |
| Phí thuê Cloud Server |  |
| Hệ thống thiết bị IOT | 30000000 |
| Phí di chuyển đi khảo sát yêu cầu khách hàng |  |

## Schedule

| ID | WBS | Task | Type | Duration | Start | Finish | Predecessors | Complete | Remaining | Baseline start | Baseline finish | Baseline duration | Total slack | Free slack | Constraint | Resources | Work | Actual work | Cost | Baseline cost | Actual cost |
| --- | --- | --- | --- | --- | --- | --- | --- | --- | --- | --- | --- | --- | --- | --- | --- | --- | --- | --- | --- | --- | --- |
| 1 | 1 | **SMART FARM PLANNING** |  | 81d | 2022-08-01 A | 2022-11-21 |  | 14% | 69.6d | 2022-08-01 | 2022-11-11 | 75d | 0d |  |  |  | 1280h | 184h | 158,840,000 | 152,600,000 | 18,240,000 |
| 2 | 1.1 | **Khảo sát và phân tích hệ thống** |  | 13d | 2022-08-01 A | 2022-08-17 A |  | 100% |  | 2022-08-01 | 2022-08-12 | 10d |  |  |  |  | 184h | 184h | 18,240,000 | 15,040,000 | 18,240,000 |
| 3 | 1.1.1 | Khảo sát các hệ thống tương tự |  | 4d | 2022-08-01 A | 2022-08-04 A |  | 100% |  | 2022-08-01 | 2022-08-03 | 3d |  |  |  | Hà Duyên Thắng; Đặng Trần Hữu Luân | 64h | 64h | 6,400,000 | 4,800,000 | 6,400,000 |
| 4 | 1.1.2 | **Phân tích yêu cầu** |  | 4d | 2022-08-05 A | 2022-08-10 A |  | 100% |  | 2022-08-04 | 2022-08-09 | 4d |  |  |  |  | 32h | 32h | 3,200,000 | 3,200,000 | 3,200,000 |
| 5 | 1.1.2.1 | Phân tích yêu cầu chức năng |  | 2d | 2022-08-05 A | 2022-08-08 A | 3 | 100% |  | 2022-08-04 | 2022-08-05 | 2d |  |  |  | Đặng Trần Hữu Luân | 16h | 16h | 1,600,000 | 1,600,000 | 1,600,000 |
| 6 | 1.1.2.2 | Phân tích yêu cầu phi chức năng |  | 2d | 2022-08-09 A | 2022-08-10 A | 5 | 100% |  | 2022-08-08 | 2022-08-09 | 2d |  |  | start no earlier than 2022-08-04 | Đặng Trần Hữu Luân | 16h | 16h | 1,600,000 | 1,600,000 | 1,600,000 |
| 7 | 1.1.3 | **Phân tích nguồn lực** |  | 3d | 2022-08-05 A | 2022-08-09 A |  | 100% |  | 2022-08-04 | 2022-08-08 | 3d |  |  |  |  | 40h | 40h | 3,840,000 | 3,840,000 | 3,840,000 |
| 8 | 1.1.3.1 | Phân tích nhân sự |  | 2d | 2022-08-05 A | 2022-08-08 A | 3 | 100% |  | 2022-08-04 | 2022-08-05 | 2d |  |  |  | Phạm Hữu Phúc | 16h | 16h | 1,920,000 | 1,920,000 | 1,920,000 |
| 9 | 1.1.3.2 | Phân tích tài chính |  | 3d | 2022-08-05 A | 2022-08-09 A | 3 | 100% |  | 2022-08-04 | 2022-08-08 | 3d |  |  |  | Phùng Minh Khánh | 24h | 24h | 1,920,000 | 1,920,000 | 1,920,000 |
| 10 | 1.1.4 | Phân tích tính khả thi |  | 6d | 2022-08-10 A | 2022-08-17 A | 9 | 100% |  | 2022-08-09 | 2022-08-12 | 4d |  |  |  | Hà Duyên Thắng | 48h | 48h | 4,800,000 | 3,200,000 | 4,800,000 |
| 11 | 1.1.5 | Hoàn tất giai đoạn phân tích | milestone | 0d | 2022-08-17 A | 2022-08-17 A | 10 | 100% |  | 2022-08-12 | 2022-08-12 | 0d |  |  | finish no earlier than 2022-08-10 |  |  |  |  |  |  |
| 12 | 1.2 | **Thiết kế hệ thống** |  | 18d | 2022-08-18 | 2022-09-12 |  |  |  | 2022-08-15 | 2022-09-09 | 20d | 0d |  |  | Hệ thống thiết bị IOT | 360h |  | 65,520,000 | 65,520,000 |  |
| 13 | 1.2.1 | **Thiết kế kiến trúc tổng thể** |  | 5d | 2022-08-18 | 2022-08-24 |  |  |  | 2022-08-15 | 2022-08-19 | 5d | 0d |  |  |  | 96h |  | 9,600,000 | 9,600,000 |  |
| 14 | 1.2.1.1 | Kiến trúc cho Client |  | 4d | 2022-08-18 | 2022-08-23 | 10 |  |  | 2022-08-15 | 2022-08-18 | 4d | 0d |  |  | Đặng Trần Hữu Luân; Hà Duyên Thắng | 64h |  | 6,400,000 | 6,400,000 |  |
| 15 | 1.2.1.2 | Kiến trúc cho server |  | 4d | 2022-08-18 | 2022-08-24 | 14SS |  |  | 2022-08-15 | 2022-08-19 | 4d | 53d | 0d |  | Phạm Hữu Phúc; Phùng Minh Khánh | 32h |  | 3,200,000 | 3,200,000 |  |
| 16 | 1.2.2 | **Thiết kế lược đồ** |  | 12d | 2022-08-18 | 2022-09-02 |  |  |  | 2022-08-15 | 2022-08-30 | 12d | 0d |  |  |  | 96h |  | 9,600,000 | 9,600,000 |  |
| 17 | 1.2.2.1 | Thiết kế use case, viết đặc tả |  | 3d | 2022-08-25 | 2022-08-29 | 15, 14 |  |  | 2022-08-22 | 2022-08-24 | 3d | 57d |  |  | Phạm Hữu Phúc; Đặng Trần Hữu Luân | 48h |  | 5,280,000 | 5,280,000 |  |
| 18 | 1.2.2.2 | Thiết kế sequence diagram |  | 3d | 2022-08-31 | 2022-09-02 | 15, 14 |  |  | 2022-08-26 | 2022-08-30 | 3d | 53d |  |  | Hà Duyên Thắng | 24h |  | 2,400,000 | 2,400,000 |  |
| 19 | 1.2.2.3 | Thiết kế activity diagram |  | 3d | 2022-08-18 | 2022-08-22 | 14SS |  |  | 2022-08-15 | 2022-08-17 | 3d | 0d |  |  | Phùng Minh Khánh | 24h |  | 1,920,000 | 1,920,000 |  |
| 20 | 1.2.3 | **Thiết kế cơ sở dữ liệu** |  | 7d | 2022-08-24 | 2022-09-01 |  |  |  | 2022-08-19 | 2022-08-29 | 7d | 0d |  |  |  | 56h |  | 5,920,000 | 5,920,000 |  |
| 21 | 1.2.3.1 | Thiết kế ERD |  | 5d | 2022-08-24 | 2022-08-30 | 19FS+1d |  |  | 2022-08-19 | 2022-08-25 | 5d | 0d |  |  | Hà Duyên Thắng | 40h |  | 4,000,000 | 4,000,000 |  |
| 22 | 1.2.3.2 | Mapping ERD |  | 2d | 2022-08-31 | 2022-09-01 | 21 |  |  | 2022-08-26 | 2022-08-29 | 2d | 54d |  |  | Phạm Hữu Phúc | 16h |  | 1,920,000 | 1,920,000 |  |
| 23 | 1.2.4 | **Thiết kế giao diện** |  | 9d | 2022-08-31 | 2022-09-12 |  |  |  | 2022-08-26 | 2022-09-07 | 9d | 0d |  |  |  | 112h |  | 10,400,000 | 10,400,000 |  |
| 24 | 1.2.4.1 | Vẽ Mockup Wireframe |  | 4d | 2022-08-31 | 2022-09-05 | 21 |  |  | 2022-08-26 | 2022-08-31 | 4d | 52d |  |  | Đặng Trần Hữu Luân | 32h |  | 3,200,000 | 3,200,000 |  |
| 25 | 1.2.4.2 | Thiết kế chi tiết giao diện (Figma) |  | 9d | 2022-08-31 | 2022-09-12 | 21 |  |  | 2022-08-26 | 2022-09-07 | 9d | 0d |  |  | Đặng Trần Hữu Luân; Phùng Minh Khánh | 80h |  | 7,200,000 | 7,200,000 |  |
| 26 | 1.2.5 | Hoàn thành giai đoạn thiết kế hệ thống | milestone | 0d | 2022-09-09 | 2022-09-09 |  |  |  | 2022-09-09 | 2022-09-09 | 0d | 0d |  | must finish on 2022-09-09 |  |  |  |  |  |  |

| ID | WBS | Task | Type | Duration | Start | Finish | Predecessors | Baseline start | Baseline finish | Baseline duration | Total slack | Constraint | Resources | Work | Cost | Baseline cost |
| --- | --- | --- | --- | --- | --- | --- | --- | --- | --- | --- | --- | --- | --- | --- | --- | --- |
| 27 | 1.3 | **Hiện thực** |  | 25d | 2022-09-14 | 2022-10-18 |  | 2022-09-09 | 2022-10-11 | 23d | 0d |  |  | 352h | 34,880,000 | 33,440,000 |
| 28 | 1.3.1 | **Lập trình Front end** |  | 22d | 2022-09-14 | 2022-10-13 |  | 2022-09-09 | 2022-10-06 | 20d | 0d |  |  | 176h | 17,600,000 | 16,160,000 |
| 29 | 1.3.1.1 | Code giao diện đăng nhập, đăng ký |  | 5d | 2022-09-14 | 2022-09-20 | 25FS+1d | 2022-09-09 | 2022-09-14 | 4d | 0d |  | Phùng Minh Khánh | 40h | 3,200,000 | 2,560,000 |
| 30 | 1.3.1.2 | Code giao diện điều khiển Module IOT |  | 5d | 2022-09-21 | 2022-09-27 | 29 | 2022-09-15 | 2022-09-21 | 5d | 0d |  | Phạm Hữu Phúc | 40h | 4,800,000 | 4,800,000 |
| 31 | 1.3.1.3 | Code giao diện thiết lập thông số theo dõi, quan sát cho thiết bị IOT |  | 6d | 2022-09-28 | 2022-10-05 | 30 | 2022-09-22 | 2022-09-29 | 6d | 0d |  | Hà Duyên Thắng | 48h | 4,800,000 | 4,800,000 |
| 32 | 1.3.1.4 | Code giao diện thống kê, phân tích |  | 6d | 2022-10-06 | 2022-10-13 | 31 | 2022-09-30 | 2022-10-06 | 5d | 0d |  | Đặng Trần Hữu Luân | 48h | 4,800,000 | 4,000,000 |
| 33 | 1.3.2 | **Lập trình Backend** |  | 21d | 2022-09-14 | 2022-10-12 |  | 2022-09-09 | 2022-10-06 | 20d | 16d |  |  | 152h | 14,880,000 | 14,880,000 |
| 34 | 1.3.2.1 | Code Chức năng đăng nhập, đăng ký |  | 3d | 2022-09-14 | 2022-09-16 | 29SS | 2022-09-09 | 2022-09-13 | 3d | 44d |  | Phạm Hữu Phúc | 24h | 2,880,000 | 2,880,000 |
| 35 | 1.3.2.2 | Code chức năng thiết lập, cấu hình cho thiết bị IOT |  | 5d | 2022-09-21 | 2022-09-27 | 30SS | 2022-09-15 | 2022-09-21 | 5d | 37d |  | Phùng Minh Khánh | 40h | 3,200,000 | 3,200,000 |
| 36 | 1.3.2.3 | Code chức năng điều khiển Module IOT |  | 6d | 2022-09-28 | 2022-10-05 | 31SS | 2022-09-22 | 2022-09-29 | 6d | 31d |  | Đặng Trần Hữu Luân | 48h | 4,800,000 | 4,800,000 |
| 37 | 1.3.2.4 | Code chức năng phân tích, thống kê |  | 5d | 2022-10-06 | 2022-10-12 | 32SS | 2022-09-30 | 2022-10-06 | 5d | 0d |  | Hà Duyên Thắng | 40h | 4,000,000 | 4,000,000 |
| 38 | 1.3.3 | Tích hợp với IOT Cloud Platform |  | 3d | 2022-10-14 | 2022-10-18 | 37 | 2022-10-07 | 2022-10-11 | 3d | 0d |  | Đặng Trần Hữu Luân | 24h | 2,400,000 | 2,400,000 |
| 39 | 1.3.4 | Hoàn thành giai đoạn code, bàn giao cho tester | milestone | 0d | 2022-10-11 | 2022-10-11 |  | 2022-10-11 | 2022-10-11 | 0d | 0d | must finish on 2022-10-11 |  |  |  |  |
| 40 | 1.4 | **Kiểm thử** |  | 20d | 2022-10-19 | 2022-11-15 |  | 2022-10-12 | 2022-11-07 | 19d | 0d |  |  | 328h | 34,080,000 | 32,480,000 |
| 41 | 1.4.1 | Lên kịch bản kiểm thử |  | 5d | 2022-10-19 | 2022-10-25 | 38 | 2022-10-12 | 2022-10-17 | 4d | 0d |  | Phạm Hữu Phúc; Phùng Minh Khánh | 80h | 8,000,000 | 6,400,000 |
| 42 | 1.4.2 | Viết Unit Test |  | 8d | 2022-10-26 | 2022-11-04 | 41 | 2022-10-18 | 2022-10-27 | 8d | 0d |  | Hà Duyên Thắng; Phạm Hữu Phúc | 128h | 14,080,000 | 14,080,000 |
| 43 | 1.4.3 | Integrate Testing |  | 8d | 2022-10-19 | 2022-10-28 | 38 | 2022-10-12 | 2022-10-21 | 8d | 16d |  | Đặng Trần Hữu Luân | 64h | 6,400,000 | 6,400,000 |
| 44 | 1.4.4 | Fix bug, hoàn thiện code |  | 7d | 2022-11-07 | 2022-11-15 | 42 | 2022-10-28 | 2022-11-07 | 7d | 0d |  | Đặng Trần Hữu Luân | 56h | 5,600,000 | 5,600,000 |
| 45 | 1.4.5 | Bàn giao app hoàn chỉnh | milestone | 0d | 2022-11-01 | 2022-11-01 |  | 2022-11-01 | 2022-11-01 | 0d | 0d | must finish on 2022-11-01 |  |  |  |  |
| 46 | 1.5 | **Vận hành** |  | 4d | 2022-11-16 | 2022-11-21 |  | 2022-11-08 | 2022-11-11 | 4d | 0d |  | Tiền điện; Phí thuê Cloud Server [0.1%] | 56h | 6,120,000 | 6,120,000 |
| 47 | 1.5.1 | Lắp đặt thiết bị IOT |  | 2d | 2022-11-16 | 2022-11-17 | 44 | 2022-11-08 | 2022-11-09 | 2d | 0d |  | Hà Duyên Thắng | 16h | 1,600,000 | 1,600,000 |
| 48 | 1.5.2 | Deploy ứng dụng |  | 2d | 2022-11-18 | 2022-11-21 | 47 | 2022-11-10 | 2022-11-11 | 2d | 0d |  | Đặng Trần Hữu Luân | 16h | 1,600,000 | 1,600,000 |
| 49 | 1.5.3 | Viết tài liệu hướng dẫn |  | 3d | 2022-11-16 | 2022-11-18 | 47SS | 2022-11-08 | 2022-11-10 | 3d | 1d |  | Phùng Minh Khánh | 24h | 1,920,000 | 1,920,000 |
