# lab2_bai3

Schedule from MS Project, 2022-10-10 to 2022-12-30, status date 2022-12-02, costs in $, A marks actual dates.

## Calendars

- Standard: Mon-Fri 08:00-12:00, 13:00-17:00; Sat-Sun off.

## Resources

| Resource | Rate |
| --- | --- |
| Phùng Minh Khánh | 30 |
| Hà Duyên Thắng | 25 |
| Phạm Hữu Phúc | 20 |
| Đặng Trần Hữu Luân | 25 |
| Phí đi lại | 5 |

## Schedule

| ID | WBS | Task | Type | Duration | Start | Finish | Predecessors | Complete | Remaining | Baseline start | Baseline finish | Baseline duration | Total slack | Resources | Work | Actual work | Cost | Baseline cost | Actual cost |
| --- | --- | --- | --- | --- | --- | --- | --- | --- | --- | --- | --- | --- | --- | --- | --- | --- | --- | --- | --- |
| 1 | 1 | **Tiến độ xây dựng dự án Xây dựng phần mềm Quản lý Nông trại** |  | 60d | 2022-10-10 A | 2022-12-30 |  | 67% | 20d | 2022-10-10 | 2022-12-30 | 60d | 0d |  | 1600h | 1072h | 39,760 | 39,760 | 28,760 |
| 2 | 1.1 | **Phân tích và thu thập yêu cầu của người dùng** |  | 5d | 2022-10-10 A | 2022-10-14 A |  | 100% |  | 2022-10-10 | 2022-10-14 | 5d |  |  | 112h | 112h | 2,760 | 2,760 | 2,760 |
| 3 | 1.1.1 | **Thu thập yêu cầu của người dùng** |  | 3d | 2022-10-10 A | 2022-10-12 A |  | 100% |  | 2022-10-10 | 2022-10-12 | 3d |  |  | 48h | 48h | 1,160 | 1,160 | 1,160 |
| 4 | 1.1.1.1 | Xác định các yêu cầu sơ bộ của khách hàng | manual | 1d | 2022-10-10 A | 2022-10-10 A |  | 100% |  | 2022-10-10 | 2022-10-10 | 1d |  | Phùng Minh Khánh; Hà Duyên Thắng | 16h | 16h | 440 | 440 | 440 |
| 5 | 1.1.1.2 | Gặp khách hàng trao đổi về dự án | manual | 1d | 2022-10-11 A | 2022-10-11 A | 4 | 100% |  | 2022-10-11 | 2022-10-11 | 1d |  | Phùng Minh Khánh; Hà Duyên Thắng; Phí đi lại | 24h | 24h | 480 | 480 | 480 |
| 6 | 1.1.1.3 | Viết báo cáo yêu cầu của khách hàng | manual | 1d | 2022-10-12 A | 2022-10-12 A | 4, 5 | 100% |  | 2022-10-12 | 2022-10-12 | 1d |  | Phùng Minh Khánh | 8h | 8h | 240 | 240 | 240 |
| 7 | 1.1.2 | **Hiện thực yêu cầu khách hàng bằng sơ đồ** |  | 2d | 2022-10-13 A | 2022-10-14 A |  | 100% |  | 2022-10-13 | 2022-10-14 | 2d |  |  | 64h | 64h | 1,600 | 1,600 | 1,600 |
| 8 | 1.1.2.1 | Sơ đồ ERD | manual | 2d | 2022-10-13 A | 2022-10-14 A | 6 | 100% |  | 2022-10-13 | 2022-10-14 | 2d |  | Phạm Hữu Phúc; Đặng Trần Hữu Luân; Phùng Minh Khánh; Hà Duyên Thắng | 56h | 56h | 1,400 | 1,400 | 1,400 |
| 9 | 1.1.2.2 | Báo cáo quá trình làm việc | manual | 1d | 2022-10-14 A | 2022-10-14 A | 6 | 100% |  | 2022-10-14 | 2022-10-14 | 1d |  | Đặng Trần Hữu Luân | 8h | 8h | 200 | 200 | 200 |
| 10 | 1.2 | **Thiết kế hệ thống** |  | 18d | 2022-10-17 A | 2022-11-09 |  | 99% | 0d | 2022-10-17 | 2022-11-09 | 18d | 0d |  | 416h | 416h | 10,000 | 10,000 | 10,000 |
| 11 | 1.2.1 | **Đặc tả phần mềm** |  | 7d | 2022-10-17 A | 2022-10-25 A |  | 100% |  | 2022-10-17 | 2022-10-25 | 7d |  |  | 112h | 112h | 2,720 | 2,720 | 2,720 |
| 12 | 1.2.1.1 | Xác định yêu cầu chức năng | manual | 1d | 2022-10-17 A | 2022-10-17 A | 9 | 100% |  | 2022-10-17 | 2022-10-17 | 1d |  | Đặng Trần Hữu Luân | 8h | 8h | 200 | 200 | 200 |
| 13 | 1.2.1.2 | Xác định yêu cầu phi chức năng | manual | 1d | 2022-10-17 A | 2022-10-17 A | 9 | 100% |  | 2022-10-17 | 2022-10-17 | 1d |  | Hà Duyên Thắng | 8h | 8h | 200 | 200 | 200 |
| 14 | 1.2.1.3 | Thiết kế usecase | manual | 2d | 2022-10-18 A | 2022-10-19 A | 12, 13 | 100% |  | 2022-10-18 | 2022-10-19 | 2d |  | Phùng Minh Khánh; Phạm Hữu Phúc | 32h | 32h | 800 | 800 | 800 |
| 15 | 1.2.1.4 | Thiết kế sequence diagram | manual | 2d | 2022-10-20 A | 2022-10-21 A | 14 | 100% |  | 2022-10-20 | 2022-10-21 | 2d |  | Đặng Trần Hữu Luân; Hà Duyên Thắng | 32h | 32h | 800 | 800 | 800 |
| 16 | 1.2.1.5 | Thiết kế activity diagram | manual | 2d | 2022-10-24 A | 2022-10-25 A | 15 | 100% |  | 2022-10-24 | 2022-10-25 | 2d |  | Đặng Trần Hữu Luân; Phạm Hữu Phúc | 32h | 32h | 720 | 720 | 720 |
| 17 | 1.2.2 | **Xây dựng hệ thống sơ bộ** |  | 11d | 2022-10-26 A | 2022-11-09 |  | 99% | 0d | 2022-10-26 | 2022-11-09 | 11d | 0d |  | 304h | 304h | 7,280 | 7,280 | 7,280 |
| 18 | 1.2.2.1 | Chọn công nghệ | manual | 1d | 2022-10-26 A | 2022-10-26 A | 12, 13, 14, 15, 16 | 100% |  | 2022-10-26 | 2022-10-26 | 1d |  | Đặng Trần Hữu Luân; Hà Duyên Thắng; Phạm Hữu Phúc; Phùng Minh Khánh | 32h | 32h | 800 | 800 | 800 |
| 19 | 1.2.2.2 | Thiết kế UI/UX | manual | 8d | 2022-10-27 A | 2022-11-07 A | 18 | 100% |  | 2022-10-27 | 2022-11-07 | 8d |  | Đặng Trần Hữu Luân; Hà Duyên Thắng; Phạm Hữu Phúc; Phùng Minh Khánh | 256h | 256h | 6,400 | 6,400 | 6,400 |
| 20 | 1.2.2.3 | Trao đổi và sửa đổi theo ý của khách hàng | manual | 2d | 2022-11-08 A | 2022-11-09 | 19 | 99% | 0d | 2022-11-08 | 2022-11-09 | 2d |  | Hà Duyên Thắng; Phùng Minh Khánh; Phí đi lại | 16h | 16h | 80 | 80 | 80 |
| 21 | 1.3 | **Xây dựng hệ thống** |  | 29d | 2022-11-10 A | 2022-12-20 |  | 59% | 12d | 2022-11-10 | 2022-12-20 | 29d | 0d |  | 928h | 544h | 23,200 | 23,200 | 16,000 |
| 22 | 1.3.1 | Thiết kế database | manual | 2d | 2022-11-10 A | 2022-11-11 A | 20 | 100% |  | 2022-11-10 | 2022-11-11 | 2d |  | Đặng Trần Hữu Luân; Hà Duyên Thắng; Phạm Hữu Phúc; Phùng Minh Khánh | 64h | 64h | 1,600 | 1,600 | 1,600 |
| 23 | 1.3.2 | Xây dựng model | manual | 25d | 2022-11-14 A | 2022-12-16 | 22 | 60% | 10d | 2022-11-14 | 2022-12-16 | 25d |  | Đặng Trần Hữu Luân; Hà Duyên Thắng; Phạm Hữu Phúc; Phùng Minh Khánh | 800h | 480h | 20,000 | 20,000 | 14,400 |
| 24 | 1.3.3 | Kiểm thử | manual | 2d | 2022-12-19 | 2022-12-20 | 23 |  |  | 2022-12-19 | 2022-12-20 | 2d |  | Đặng Trần Hữu Luân; Hà Duyên Thắng; Phạm Hữu Phúc; Phùng Minh Khánh | 64h |  | 1,600 | 1,600 |  |

| ID | WBS | Task | Type | Duration | Start | Finish | Predecessors | Baseline start | Baseline finish | Baseline duration | Total slack | Resources | Work | Cost | Baseline cost |
| --- | --- | --- | --- | --- | --- | --- | --- | --- | --- | --- | --- | --- | --- | --- | --- |
| 25 | 1.4 | **Kiểm tra chất lượng** |  | 2d | 2022-12-21 | 2022-12-22 |  | 2022-12-21 | 2022-12-22 | 2d | 0d |  | 32h | 800 | 800 |
| 26 | 1.4.1 | Unit test | manual | 1d | 2022-12-21 | 2022-12-21 | 24 | 2022-12-21 | 2022-12-21 | 1d |  | Hà Duyên Thắng; Phạm Hữu Phúc | 16h | 360 | 360 |
| 27 | 1.4.2 | Inspectation | manual | 1d | 2022-12-22 | 2022-12-22 | 26 | 2022-12-22 | 2022-12-22 | 1d |  | Đặng Trần Hữu Luân; Phùng Minh Khánh | 16h | 440 | 440 |
| 28 | 1.5 | **Chuyển giao sản phẩm** |  | 6d | 2022-12-23 | 2022-12-30 |  | 2022-12-23 | 2022-12-30 | 6d |  |  | 112h | 3,000 | 3,000 |
| 29 | 1.5.1 | Chuyển giao sản phẩm | manual | 3d | 2022-12-23 | 2022-12-27 | 27 | 2022-12-23 | 2022-12-27 | 3d |  | Hà Duyên Thắng; Phùng Minh Khánh | 48h | 1,320 | 1,320 |
| 30 | 1.5.2 | Hướng dẫn sử dụng | manual | 3d | 2022-12-28 | 2022-12-30 | 29 | 2022-12-28 | 2022-12-30 | 3d |  | Hà Duyên Thắng; Phùng Minh Khánh | 48h | 1,320 | 1,320 |
| 31 | 1.5.3 | Nhận feedback | manual | 1d | 2022-12-30 | 2022-12-30 | 30FF | 2022-12-30 | 2022-12-30 | 1d |  | Đặng Trần Hữu Luân; Phạm Hữu Phúc | 16h | 360 | 360 |
